# DFS人力资源系统重构项目

Schedule from a web Gantt chart, 2024-07-01 to 2026-09-30.
Saturdays and Sundays are off

## Schedule

| ID | WBS | Task | Type | Duration | Start | Finish | Complete | inPeople |
| --- | --- | --- | --- | --- | --- | --- | --- | --- |
| 2 | 1 | **项目商务阶段** |  | 23d | 2024-07-01 | 2024-07-31 | 100% |  |
| 3 | 1.1 | 技术协议书编写 |  | 5d | 2024-07-01 | 2024-07-05 | 100% | 陶智、顾恒琪 |
| 4 | 1.2 | 合同签署确认 | fixed end | 23d | 2024-07-01 | 2024-07-31 | 100% | 联友、盖雅 |
| 5 | 2 | **项目准备阶段** |  | 55d | 2024-07-01 | 2024-09-13 | 47% |  |
| 6 | 2.1 | **建立项目组工作环境** |  | 3d | 2024-07-01 | 2024-07-03 | 100% |  |
| 7 | 2.1.1 | 办公室和会议室 |  | 1d | 2024-07-01 | 2024-07-01 | 100% | 陶智 |
| 8 | 2.1.2 | 门禁、网络、通讯工具、饭卡、SVN |  | 3d | 2024-07-01 | 2024-07-03 | 100% | 陶智 |
| 9 | 2.1.3 | 其他办公设备和后勤保障（打印等） |  | 3d | 2024-07-01 | 2024-07-03 | 100% | 陶智 |
| 10 | 2.2 | **确定项目组机构** |  | 20d | 2024-07-01 | 2024-07-26 | 62% |  |
| 11 | 2.2.1 | 东风南方项目组织架构搭建 |  | 5d | 2024-07-01 | 2024-07-05 | 100% | 丁敏、顾恒琪 |
| 12 | 2.2.2 | 盖雅项目组织架构搭建 |  | 5d | 2024-07-01 | 2024-07-05 | 100% | 丁敏、顾恒琪 |
| 13 | 2.2.3 | 东风南方项目组成员和关键用户确认 |  | 15d | 2024-07-08 | 2024-07-26 |  | 丁敏、顾恒琪 |
| 14 | 2.2.4 | 盖雅项目组成员确认 |  | 15d | 2024-07-08 | 2024-07-26 | 100% | 丁敏、顾恒琪 |
| 15 | 2.3 | **项目章程编写** |  | 5d | 2024-07-01 | 2024-07-05 | 100% |  |
| 16 | 2.3.1 | 制定项目管理的标准与规范 |  | 5d | 2024-07-01 | 2024-07-05 | 100% | 顾恒琪、熊江红 |
| 17 | 2.3.2 | 确定项目沟通交流策略及计划 |  | 5d | 2024-07-01 | 2024-07-05 | 100% | 顾恒琪、熊江红 |
| 18 | 2.3.3 | 项目实施方法及管理方案 |  | 5d | 2024-07-01 | 2024-07-05 | 100% | 顾恒琪、熊江红 |
| 19 | 2.3.4 | 定义项目文件管理方法 |  | 5d | 2024-07-01 | 2024-07-05 | 100% | 顾恒琪、熊江红 |
| 20 | 2.3.5 | 项目问题管理方案 |  | 5d | 2024-07-01 | 2024-07-05 | 100% | 顾恒琪、熊江红 |
| 21 | 2.4 | **实施计划编写** |  | 25d | 2024-07-01 | 2024-08-02 | 44% |  |
| 22 | 2.4.1 | 定义项目实施目标 |  | 10d | 2024-07-22 | 2024-08-02 | 100% | 丁敏、顾恒琪 |
| 23 | 2.4.2 | 确定项目实施策略及方法 |  | 10d | 2024-07-22 | 2024-08-02 | 100% | 丁敏、顾恒琪 |
| 24 | 2.4.3 | 制定并完善项目工作计划 |  | 25d | 2024-07-01 | 2024-08-02 |  | 顾恒琪 |
| 25 | 2.5 | **业务现状沟通** |  | 21d | 2024-07-05 | 2024-08-02 | 76% |  |
| 26 | 2.5.1 | 访谈问卷准备 |  | 3d | 2024-07-05 | 2024-07-09 | 100% | 顾恒琪、熊江红 |

| ID | WBS | Task | Duration | Start | Finish | Predecessors | Complete | inPeople | Status |
| --- | --- | --- | --- | --- | --- | --- | --- | --- | --- |
| 27 | 2.5.2 | **总部机关部门访谈** | 11d | 2024-07-15 | 2024-07-29 |  | 100% | 顾恒琪、熊江红 |  |
| 28 | 2.5.2.1 | 人力资源部 | 1d | 2024-07-15 | 2024-07-15 |  | 100% |  |  |
| 29 | 2.5.2.2 | 财务部 | 1d | 2024-07-16 | 2024-07-16 |  | 100% |  |  |
| 30 | 2.5.2.3 | 办公室 | 1d | 2024-07-22 | 2024-07-22 |  | 100% |  |  |
| 31 | 2.5.2.4 | 经营规划部 | 1d | 2024-07-17 | 2024-07-17 |  | 100% |  |  |
| 32 | 2.5.2.5 | 汽车营销事业部 | 6d | 2024-07-17 | 2024-07-24 |  | 100% |  |  |
| 33 | 2.5.2.6 | 党群工作部 | 1d | 2024-07-22 | 2024-07-22 |  | 100% |  |  |
| 34 | 2.5.2.7 | 纪检监察部 | 1d | 2024-07-29 | 2024-07-29 |  | 100% |  |  |
| 35 | 2.5.2.8 | 数转办 | 1d | 2024-07-29 | 2024-07-29 |  | 100% |  |  |
| 36 | 2.5.3 | 集团现状业务沟通总结 | 5d | 2024-07-29 | 2024-08-02 |  |  | 顾恒琪、熊江红 |  |
| 37 | 2.6 | **项目启动会** | 10d | 2024-09-02 | 2024-09-13 |  |  |  |  |
| 38 | 2.6.1 | 启动会材料准备 | 5d | 2024-09-02 | 2024-09-06 |  |  | 顾恒琪、熊江红 |  |
| 39 | 2.6.2 | 启动会材料汇报 | 4d | 2024-09-09 | 2024-09-12 |  |  |  |  |
| 40 | 2.6.3 | 项目启动会 | 1d | 2024-09-13 | 2024-09-13 |  |  | DFS、盖雅 |  |
| 41 | 2.7 | **系统产品安装** | 30d | 2024-07-29 | 2024-09-06 |  | 2% |  |  |
| 42 | 2.7.1 | 硬件环境需求填报 | 1d | 2024-07-29 | 2024-07-29 |  | 100% | 顾恒琪、顾浩 |  |
| 43 | 2.7.2 | 硬件环境需求申请 | 20d | 2024-07-29 | 2024-08-23 |  |  |  |  |
| 44 | 2.7.3 | 数转办提供蓝图评审模板 | 2d | 2024-08-15 | 2024-08-16 |  |  |  |  |
| 45 | 2.7.4 | 基础设施蓝图设计文档编写 | 17d | 2024-07-29 | 2024-08-20 |  |  | 顾恒琪、顾浩 |  |
| 46 | 2.7.5 | 数转办基础设施蓝图设计评审 | 3d | 2024-08-21 | 2024-08-23 | 45 |  | 联友 | waiting |
| 47 | 2.7.6 | 测试、生产环境系统安装和部署 | 10d | 2024-08-26 | 2024-09-06 | 46 |  | 顾浩 | waiting |
| 48 | 3 | **系统切换阶段** | 95d | 2024-07-22 | 2024-11-29 |  | 5% |  |  |
| 49 | 3.1 | **业务需求调研** | 30d | 2024-07-22 | 2024-08-30 |  | 23% |  |  |
| 50 | 3.1.1 | 保险代理公司调研 | 1d | 2024-07-22 | 2024-07-22 |  | 100% |  |  |
| 51 | 3.1.2 | 数据公司（风神咨询）调研 | 1d | 2024-07-25 | 2024-07-25 |  | 100% |  |  |
| 52 | 3.1.3 | 营销板块调研问卷准备 | 1d | 2024-07-29 | 2024-07-29 |  | 100% | 熊江红 |  |
| 53 | 3.1.4 | 广州DFS调研需求说明会 | 1d | 2024-07-29 | 2024-07-29 |  | 100% |  |  |
| 54 | 3.1.5 | 非营销板块调研问卷准备 | 1d | 2024-07-30 | 2024-07-30 |  | 100% |  |  |
| 55 | 3.1.6 | 联友出行（郑州联友出行）调研需求说明会 | 1d | 2024-07-30 | 2024-07-30 |  | 100% |  |  |
| 56 | 3.1.7 | 广州实业调研 | 1d | 2024-08-12 | 2024-08-12 |  |  | 熊江红 |  |
| 57 | 3.1.8 | 广州DFS（保代分公司）调研 | 1d | 2024-08-13 | 2024-08-13 |  |  |  |  |
| 58 | 3.1.9 | 石家庄、兰州调研需求说明会 | 1d | 2024-08-14 | 2024-08-14 |  |  |  |  |
| 59 | 3.1.10 | 锦上技研、锦上阳光调研 | 1d | 2024-08-15 | 2024-08-15 |  |  |  |  |
| 60 | 3.1.11 | 联友出行（郑州联友出行）调研 | 1d | 2024-08-15 | 2024-08-15 |  |  |  |  |
| 61 | 3.1.12 | 河北DFS（石家庄、保代分公司） | 2d | 2024-08-19 | 2024-08-20 |  |  |  |  |
| 62 | 3.1.13 | 重庆DFS（兰州） | 2d | 2024-08-21 | 2024-08-22 |  |  |  |  |
| 63 | 3.1.14 | 营销板块调研需求说明会 | 1d | 2024-08-23 | 2024-08-23 |  |  |  |  |
| 64 | 3.1.15 | 东南西北大区线上沟通 | 4d | 2024-08-27 | 2024-08-30 |  |  |  |  |
| 65 | 3.1.16 | 联友科技调研需求说明会 | 1d | 2024-08-26 | 2024-08-26 |  |  |  |  |
| 66 | 3.1.17 | 联友科技访谈（人力资源部【人事】、事业计划部【组织】、生产质量部【外包】） | 4d | 2024-08-27 | 2024-08-30 |  |  |  |  |

Notes:
- 61: 8/18从广州出发到石家庄
- 62: 8/20从石家庄出发到兰州，22日返程

| ID | WBS | Task | Type | Duration | Start | Finish | Predecessors | Complete | inPeople | Status |
| --- | --- | --- | --- | --- | --- | --- | --- | --- | --- | --- |
| 67 | 3.2 | **数据标准调研** |  | 25d | 2024-07-29 | 2024-08-30 |  | 50% |  |  |
| 68 | 3.2.1 | 收集数据标准（原用友系统、DFG、DFN） |  | 5d | 2024-07-29 | 2024-08-02 |  | 100% | 徐辉 |  |
| 69 | 3.2.2 | 数据字典收集模板下发 |  | 1d | 2024-08-05 | 2024-08-05 | 68 |  | 顾恒琪 | waiting |
| 70 | 3.2.3 | 数据字典回收 |  | 4d | 2024-08-06 | 2024-08-09 | 69 |  | 顾恒琪 | waiting |
| 71 | 3.3 | **系统标准功能搭建** |  | 30d | 2024-09-09 | 2024-10-18 |  |  |  |  |
| 72 | 3.3.1 | 开发环境配置 |  | 10d | 2024-09-09 | 2024-09-20 |  |  |  |  |
| 73 | 3.3.2 | 测试环境配置 |  | 10d | 2024-09-23 | 2024-10-04 | 72 |  |  | waiting |
| 74 | 3.3.3 | 生产环境配置 |  | 5d | 2024-10-07 | 2024-10-11 | 73 |  |  | waiting |
| 75 | 3.3.4 | 环境功能验证 |  | 5d | 2024-10-14 | 2024-10-18 | 74 |  |  | waiting |
| 76 | 3.4 | **组织人事业务咨询** |  | 25d | 2024-08-13 | 2024-09-16 | 56 |  |  | waiting |
| 77 | 3.4.1 | 组织业务咨询 |  | 25d | 2024-08-13 | 2024-09-16 |  |  |  | waiting |
| 78 | 3.4.2 | 人事业务咨询 |  | 25d | 2024-08-13 | 2024-09-16 |  |  |  | waiting |
| 79 | 3.5 | **数据标准梳理** |  | 36d | 2024-08-19 | 2024-10-07 |  |  |  | waiting |
| 80 | 3.5.1 | 数据标准制定 |  | 20d | 2024-08-19 | 2024-09-13 |  |  |  | waiting |
| 81 | 3.5.2 | 数据标准确认和调整 |  | 11d | 2024-09-16 | 2024-09-30 | 80 |  |  | waiting |
| 82 | 3.5.3 | 数据收集模板制作 |  | 11d | 2024-09-23 | 2024-10-07 |  |  |  | waiting |
| 83 | 3.6 | **数据收集** |  | 14d | 2024-10-08 | 2024-10-25 |  |  |  |  |
| 84 | 3.6.1 | 数据收集模板下发 |  | 1d | 2024-10-08 | 2024-10-08 | 82 |  |  | waiting |
| 85 | 3.6.2 | 数据回收和校验 |  | 13d | 2024-10-09 | 2024-10-25 | 84 |  |  | waiting |
| 86 | 3.7 | **系统蓝图设计和确认** |  | 20d | 2024-10-21 | 2024-11-15 |  |  |  | waiting |
| 87 | 3.7.1 | 蓝图设计 |  | 10d | 2024-10-21 | 2024-11-01 |  |  |  | waiting |
| 88 | 3.7.2 | 蓝图确认及调整 |  | 10d | 2024-11-04 | 2024-11-15 | 87 |  |  | waiting |
| 89 | 3.8 | 数据清洗转换和导入 |  | 20d | 2024-10-28 | 2024-11-22 | 85 |  |  | waiting |
| 90 | 3.9 | 系统标准功能培训 |  | 4d | 2024-11-25 | 2024-11-28 | 89 |  |  | waiting |
| 91 | 3.10 | 系统切换 | fixed end | 1d | 2024-11-29 | 2024-11-29 | 90 |  |  | waiting |

| ID | WBS | Task | Duration | Start | Finish | Predecessors | Status |
| --- | --- | --- | --- | --- | --- | --- | --- |
| 92 | 4 | **业务线上化阶段** | 160d | 2024-11-18 | 2025-06-27 |  |  |
| 93 | 4.1 | 详细功能设计 | 20d | 2024-11-18 | 2024-12-13 | 88 | waiting |
| 94 | 4.2 | 固定格式报表开发 | 30d | 2024-12-16 | 2025-01-24 |  |  |
| 95 | 4.3 | 人事流程开发 | 85d | 2024-12-16 | 2025-04-11 |  |  |
| 96 | 4.4 | 员工自助开发 | 55d | 2025-01-27 | 2025-04-11 |  |  |
| 97 | 4.5 | 接口平台开发 | 55d | 2025-01-27 | 2025-04-11 |  |  |
| 98 | 4.6 | 分析报表开发 | 30d | 2025-03-03 | 2025-04-11 |  |  |
| 99 | 4.7 | 系统测试 | 35d | 2025-04-14 | 2025-05-30 |  |  |
| 100 | 4.8 | 最终用户培训 | 10d | 2025-06-02 | 2025-06-13 | 99 | waiting |
| 101 | 4.9 | 业务线上化上线 | 10d | 2025-06-16 | 2025-06-27 | 100 | waiting |
| 102 | 5 | **项目验收阶段** | 328d | 2025-06-30 | 2026-09-30 |  |  |
| 103 | 5.1 | 系统试运行 | 67d | 2025-06-30 | 2025-09-30 | 101 | waiting |
| 104 | 5.2 | 上线支持阶段 | 261d | 2025-10-01 | 2026-09-30 | 103 | waiting |
